# NguyenTrongAn_Final_Data

Schedule from MS Project, 2017-01-03 to 2018-01-26, costs in $.

## Calendars

- Standard: Mon-Fri 08:00-12:00, 13:00-17:00; Sat-Sun off.

## Resources

| Resource | Group | Rate |
| --- | --- | --- |
| V_PM | Vendor A | 280 |
| V_Lead | Vendor A | 280 |
| V_HCM | Vendor A | 180 |
| V_Payroll | Vendor A | 180 |
| V_Integration | Vendor A | 180 |
| V_Data | Vendor A | 180 |
| V_QA | Vendor A | 180 |
| C_PM | LPO |  |
| C_HCM | LPO |  |
| C_Payroll | LPO |  |
| C_IT | LPO |  |
| C_Data | LPO |  |
| C_Change | LPO |  |

## Schedule

| ID | WBS | Task | Duration | Start | Finish | Predecessors | Baseline start | Baseline finish | Baseline duration | Total slack | Resources | Work | Cost | Baseline cost |
| --- | --- | --- | --- | --- | --- | --- | --- | --- | --- | --- | --- | --- | --- | --- |
| 1 | 1 | **PHASE 1: PROJECT PLAN** | 12d | 2017-01-03 | 2017-01-18 |  | 2017-01-03 | 2017-01-18 | 12d | 0d |  | 340h | 71,160.22 | 71,160.22 |
| 2 | 1.1 | Project charter and scope confirmation | 3d | 2017-01-03 | 2017-01-05 |  | 2017-01-03 | 2017-01-05 | 3d | 0d | V_PM [211.5%]; V_HCM [60.3%]; C_PM [50%] | 77.24h | 16,820.02 | 16,820.02 |
| 3 | 1.2 | Vendor onboarding and joint planning | 4d | 2017-01-06 | 2017-01-11 | 2 | 2017-01-06 | 2017-01-11 | 4d | 0d | V_PM [179%]; V_Integration [51%]; C_PM [40%] | 86.4h | 18,976 | 18,976 |
| 4 | 1.3 | Governance, risk and milestone baseline | 4d | 2017-01-12 | 2017-01-17 | 3 | 2017-01-12 | 2017-01-17 | 4d | 0d | V_PM [179%]; V_Data [51%]; C_PM [50%] | 89.6h | 18,976 | 18,976 |
| 5 | 1.4 | Change Ambassador Network | 4d | 2017-01-12 | 2017-01-17 | 3 | 2017-01-12 | 2017-01-17 | 4d | 0d | V_Lead [113.9%]; V_HCM [32.5%]; C_Change [60%] | 66.04h | 12,076.61 | 12,076.61 |
| 6 | 1.5 | Planning approval and mobilization | 1d | 2017-01-18 | 2017-01-18 | 4, 5 | 2017-01-18 | 2017-01-18 | 1d | 0d | V_PM [162.8%]; V_HCM [46.2%]; C_PM [50%] | 20.72h | 4,311.6 | 4,311.6 |
| 7 | 2 | **PHASE 2: ARCHITECT** | 42d | 2017-01-19 | 2017-03-17 |  | 2017-01-19 | 2017-03-17 | 42d | 0d |  | 1377.62h | 228,143.25 | 228,143.25 |
| 8 | 2.1 | Core HCM, benefits and absence fit-gap | 12d | 2017-01-19 | 2017-02-03 | 6 | 2017-01-19 | 2017-02-03 | 12d | 3d | V_Lead [65.3%]; V_HCM [104.2%]; C_HCM [50%] | 210.7h | 35,553.98 | 35,553.98 |
| 9 | 2.2 | Payroll and time tracking fit-gap | 15d | 2017-01-19 | 2017-02-08 | 6 | 2017-01-19 | 2017-02-08 | 15d | 0d | V_Lead [70.7%]; V_Payroll [112.9%]; C_Payroll [50%] | 280.32h | 48,145.2 | 48,145.2 |
| 10 | 2.3 | Vendor integration requirements | 15d | 2017-02-09 | 2017-03-01 | 8, 9 | 2017-02-09 | 2017-03-01 | 15d | 0d | V_Lead [70.7%]; V_Integration [112.9%]; C_IT [40%] | 268.32h | 48,145.2 | 48,145.2 |
| 11 | 2.4 | Client integration and security requirements | 15d | 2017-02-09 | 2017-03-01 | 8, 9 | 2017-02-09 | 2017-03-01 | 15d | 0d | V_PM [54.4%]; V_Data [86.8%]; C_IT [40%] | 217.49h | 37,037.04 | 37,037.04 |
| 12 | 2.5 | Legacy data and reporting requirements | 10d | 2017-03-02 | 2017-03-15 | 10, 11 | 2017-03-02 | 2017-03-15 | 10d | 0d | V_Lead [59.9%]; V_Data [95.5%]; C_Data [50%] | 164.28h | 27,158.4 | 27,158.4 |
| 13 | 2.6 | Training strategy and learning plan | 20d | 2017-01-19 | 2017-02-15 | 6 | 2017-01-19 | 2017-02-15 | 20d | 20d | V_PM [29.9%]; V_HCM [47.8%]; C_Change [50%] | 204.29h | 27,160.64 | 27,160.64 |
| 14 | 2.7 | Architecture and blueprint approval | 2d | 2017-03-16 | 2017-03-17 | 12, 13 | 2017-03-16 | 2017-03-17 | 2d | 0d | V_PM [54.4%]; V_HCM [86.9%]; C_PM [60%] | 32.22h | 4,942.78 | 4,942.78 |
| 15 | 3 | **PHASE 3: CONFIGURE & PROTOTYPE** | 53d | 2017-03-20 | 2017-05-31 |  | 2017-03-20 | 2017-05-31 | 53d | 0d |  | 2164.43h | 333,617.46 | 333,617.46 |
| 16 | 3.1 | Configure tenant and access controls | 5d | 2017-03-20 | 2017-03-24 | 14 | 2017-03-20 | 2017-03-24 | 5d | 0d | V_Lead [36.9%]; V_Data [80.6%]; C_IT [50%] | 67.02h | 9,940.4 | 9,940.4 |
| 17 | 3.2 | Configure HCM, benefits and absence | 20d | 2017-03-27 | 2017-04-21 | 16 | 2017-03-27 | 2017-04-21 | 20d | 5d | V_Lead [40.3%]; V_HCM [88%]; C_HCM [50%] | 285.22h | 43,385.28 | 43,385.28 |
| 18 | 3.3 | Configure US payroll and time tracking | 20d | 2017-03-27 | 2017-04-21 | 16 | 2017-03-27 | 2017-04-21 | 20d | 5d | V_PM [47%]; V_Payroll [102.6%]; C_Payroll [50%] | 319.42h | 50,617.92 | 50,617.92 |
| 19 | 3.4 | Design and build vendor integrations | 25d | 2017-03-27 | 2017-04-28 | 16 | 2017-03-27 | 2017-04-28 | 25d | 0d | V_Lead [47%]; V_Integration [102.6%]; C_IT [35%] | 369.28h | 63,272.4 | 63,272.4 |
| 20 | 3.5 | Design and build client integrations | 25d | 2017-03-27 | 2017-04-28 | 16 | 2017-03-27 | 2017-04-28 | 25d | 0d | V_PM [40.3%]; V_Integration [88%]; C_IT [35%] | 326.52h | 54,231.6 | 54,231.6 |
| 21 | 3.6 | Legacy extract, mapping and cleansing | 20d | 2017-03-27 | 2017-04-21 | 16 | 2017-03-27 | 2017-04-21 | 20d | 5d | V_Lead [40.3%]; V_Data [88%]; C_Data [60%] | 301.22h | 43,385.28 | 43,385.28 |
| 22 | 3.7 | Prototype validation and business walkthrough | 11d | 2017-05-01 | 2017-05-15 | 17, 18, 19, 20, 21 | 2017-05-01 | 2017-05-15 | 11d | 0d | V_Lead [43.6%]; V_QA [95.3%]; C_HCM [40%]; C_Payroll [40%] | 192.68h | 25,850.88 | 25,850.88 |
| 23 | 3.8 | Late fit-gap correction and regression rework | 10d | 2017-05-16 | 2017-05-29 | 22 | 2017-05-16 | 2017-05-29 | 10d | 0d | V_Lead [50.4%]; V_Integration [110%]; C_IT [40%] | 160.26h | 27,114.88 | 27,114.88 |
| 24 | 3.9 | Unit verification and build approval | 2d | 2017-05-30 | 2017-05-31 | 23 | 2017-05-30 | 2017-05-31 | 2d | 0d | V_PM [33.6%]; V_QA [73.3%]; C_PM [50%] | 25.1h | 3,614.82 | 3,614.82 |
| 25 | 3.10 | Change readiness assessment and survey | 15d | 2017-03-27 | 2017-04-14 | 16 | 2017-03-27 | 2017-04-14 | 15d | 33d | V_PM [15.1%]; V_HCM [33%]; C_Change [50%] | 117.72h | 12,204 | 12,204 |

| ID | WBS | Task | Duration | Start | Finish | Predecessors | Baseline start | Baseline finish | Baseline duration | Total slack | Resources | Work | Cost | Baseline cost |
| --- | --- | --- | --- | --- | --- | --- | --- | --- | --- | --- | --- | --- | --- | --- |
| 26 | 4 | **PHASE 4: TESTING** | 105d | 2017-06-01 | 2017-10-25 |  | 2017-06-01 | 2017-10-25 | 105d | 0d |  | 2288.23h | 349,135.04 | 349,135.04 |
| 27 | 4.1 | Test strategy, cases and test environment | 10d | 2017-06-01 | 2017-06-14 | 24, 25 | 2017-06-01 | 2017-06-14 | 10d | 0d | V_Lead [28.4%]; V_QA [54.4%]; C_IT [40%] | 98.31h | 14,212.16 | 14,212.16 |
| 28 | 4.2 | Functional module regression testing | 35d | 2017-06-15 | 2017-08-02 | 27 | 2017-06-15 | 2017-08-02 | 35d | 0d | V_Lead [63.2%]; V_QA [121%]; C_HCM [40%] | 627.76h | 110,538.4 | 110,538.4 |
| 29 | 4.3 | End-to-end and integration testing (SIT) | 35d | 2017-08-03 | 2017-09-20 | 28 | 2017-08-03 | 2017-09-20 | 35d | 0d | V_Lead [63.2%]; V_Integration [121%]; C_IT [50%] | 655.76h | 110,538.4 | 110,538.4 |
| 30 | 4.4 | Parallel payroll and time reconciliation | 15d | 2017-09-21 | 2017-10-11 | 29 | 2017-09-21 | 2017-10-11 | 15d | 0d | V_Lead [37.9%]; V_Payroll [72.6%]; C_Payroll [50%] | 192.61h | 28,421.76 | 28,421.76 |
| 31 | 4.5 | Business user acceptance testing (UAT) | 8d | 2017-10-12 | 2017-10-23 | 30 | 2017-10-12 | 2017-10-23 | 8d | 0d | V_PM [31.6%]; V_QA [60.5%]; C_HCM [40%]; C_Payroll [40%] | 110.14h | 12,631.81 | 12,631.81 |
| 32 | 4.6 | Testing sign-off and deployment readiness | 2d | 2017-10-24 | 2017-10-25 | 31, 33, 34, 35 | 2017-10-24 | 2017-10-25 | 2d | 0d | V_PM [25.3%]; V_QA [48.4%]; C_PM [50%] | 19.79h | 2,527.23 | 2,527.23 |
| 33 | 4.7 | Migration rehearsal and validation | 20d | 2017-06-15 | 2017-07-12 | 27 | 2017-06-15 | 2017-07-12 | 20d | 73d | V_PM [28.4%]; V_Data [54.4%]; C_Data [60%] | 228.62h | 28,424.32 | 28,424.32 |
| 34 | 4.8 | Design analysis — delivered reports | 20d | 2017-06-15 | 2017-07-12 | 27 | 2017-06-15 | 2017-07-12 | 20d | 73d | V_PM [20.5%]; V_HCM [39.3%]; C_HCM [25%] | 135.78h | 20,526.08 | 20,526.08 |
| 35 | 4.9 | Communication and user adoption events | 30d | 2017-06-15 | 2017-07-26 | 27 | 2017-06-15 | 2017-07-26 | 30d | 63d | V_PM [14.2%]; V_HCM [27.2%]; C_Change [50%] | 219.46h | 21,314.88 | 21,314.88 |
| 36 | 5 | **PHASE 5: DEPLOYMENT** | 35d | 2017-10-26 | 2017-12-13 |  | 2017-10-26 | 2017-12-13 | 35d | 0d |  | 873h | 112,577.02 | 112,577.02 |
| 37 | 5.1 | End-user training: HCM, benefits and payroll | 15d | 2017-10-26 | 2017-11-15 | 32 | 2017-10-26 | 2017-11-15 | 15d | 5d | V_Lead [48.9%]; V_HCM [65%]; C_HCM [50%]; C_Payroll [40%]; C_Change [50%] | 304.6h | 30,450.48 | 30,450.48 |
| 38 | 5.2 | Production data migration and payroll validation | 20d | 2017-10-26 | 2017-11-22 | 32 | 2017-10-26 | 2017-11-22 | 20d | 0d | V_PM [66.6%]; V_Data [88.6%]; C_Data [50%]; C_Payroll [30%] | 376.37h | 55,367.04 | 55,367.04 |
| 39 | 5.3 | Readiness survey and remediation | 8d | 2017-11-23 | 2017-12-04 | 37, 38 | 2017-11-23 | 2017-12-04 | 8d | 0d | V_Lead [44.4%]; V_HCM [59.1%]; C_Change [50%] | 98.23h | 14,763.78 | 14,763.78 |
| 40 | 5.4 | Cutover, contingency and rollback preparation | 5d | 2017-12-05 | 2017-12-11 | 39 | 2017-12-05 | 2017-12-11 | 5d | 0d | V_PM [40%]; V_Integration [53.1%]; C_IT [60%] | 61.25h | 8,304.56 | 8,304.56 |
| 41 | 5.5 | Go-live approval and production launch | 2d | 2017-12-12 | 2017-12-13 | 40 | 2017-12-12 | 2017-12-13 | 2d | 0d | V_PM [44.4%]; V_Payroll [59.1%]; C_PM [60%]; C_Payroll [40%] | 32.56h | 3,691.17 | 3,691.17 |
| 42 | 6 | **PHASE 6: POST PRODUCTION SUPPORT** | 32d | 2017-12-14 | 2018-01-26 |  | 2017-12-14 | 2018-01-26 | 32d | 0d |  | 220.02h | 19,984.74 | 19,984.74 |
| 43 | 6.1 | Hypercare and payroll production monitoring | 20d | 2017-12-14 | 2018-01-10 | 41 | 2017-12-14 | 2018-01-10 | 20d | 0d | V_Lead [19.2%]; V_Payroll [14%]; C_Payroll [25%]; C_HCM [25%] | 133.18h | 12,649.92 | 12,649.92 |
| 44 | 6.2 | Knowledge transfer and service handover | 10d | 2018-01-11 | 2018-01-24 | 43 | 2018-01-11 | 2018-01-24 | 10d | 0d | V_PM [19.2%]; V_HCM [14%]; C_Change [30%]; C_IT [30%] | 74.58h | 6,323.52 | 6,323.52 |
| 45 | 6.3 | Project closure and final acceptance | 2d | 2018-01-25 | 2018-01-26 | 44 | 2018-01-25 | 2018-01-26 | 2d | 0d | V_PM [15.4%]; V_QA [11.2%]; C_PM [50%] | 12.25h | 1,011.3 | 1,011.3 |
